# openSUSE 12.2

Schedule from Planner, 2012-08-04 to 2012-09-12.
SUSE

## Calendars

- Vorgabe: Mon-Sun 08:00-12:00, 13:00-17:00.

## Schedule

| ID | WBS | Task | Start | Finish | Predecessors | Work |
| --- | --- | --- | --- | --- | --- | --- |
| 1 | 1 | **Pre-Gold Master development** | 2012-08-04 | 2012-08-09 |  | 352h |
| 2 | 1.1 | Expected new features document | 2012-08-04 | 2012-08-04 |  | 8h |
| 3 | 1.2 | create test plan | 2012-08-05 | 2012-08-05 | 2 | 8h |
| 4 | 1.3 | **Manuals** | 2012-08-04 | 2012-08-08 |  | 32h |
| 5 | 1.3.1 | document new features | 2012-08-04 | 2012-08-04 |  | 8h |
| 6 | 1.3.2 | detect obsolete sections in Manuals | 2012-08-04 | 2012-08-04 |  | 8h |
| 7 | 1.3.3 | update manuals | 2012-08-05 | 2012-08-05 | 6, 5 | 8h |
| 8 | 1.3.4 | documentation team finished | 2012-08-08 | 2012-08-08 | 14 | 8h |
| 9 | 1.4 | **Translations** | 2012-08-04 | 2012-08-07 |  | 40h |
| 10 | 1.4.1 | manuals | 2012-08-06 | 2012-08-06 | 7 | 8h |
| 11 | 1.4.2 | package descriptions | 2012-08-04 | 2012-08-04 |  | 8h |
| 12 | 1.4.3 | package strings | 2012-08-04 | 2012-08-04 |  | 8h |
| 13 | 1.4.4 | release notes | 2012-08-04 | 2012-08-04 |  | 8h |
| 14 | 1.4.5 | translation check finished | 2012-08-07 | 2012-08-07 | 11, 12, 10 | 8h |
| 15 | 1.5 | **Security** | 2012-08-04 | 2012-08-05 |  | 48h |
| 16 | 1.5.1 | review new setuid binaries | 2012-08-04 | 2012-08-04 |  | 8h |
| 17 | 1.5.2 | review new network services | 2012-08-04 | 2012-08-04 |  | 8h |
| 18 | 1.5.3 | review new dbus services | 2012-08-04 | 2012-08-04 |  | 8h |
| 19 | 1.5.4 | review new policykit policies | 2012-08-04 | 2012-08-04 |  | 8h |
| 20 | 1.5.5 | update Apparmor profiles | 2012-08-04 | 2012-08-04 |  | 8h |
| 21 | 1.5.6 | security check finished | 2012-08-05 | 2012-08-05 | 20, 19, 18, 17, 16 | 8h |
| 22 | 1.6 | **prepare stable branch** | 2012-08-04 | 2012-08-06 |  | 40h |
| 23 | 1.6.1 | branch new distro in OBS | 2012-08-04 | 2012-08-04 |  | 8h |
| 24 | 1.6.2 | bump release numbers in Factory | 2012-08-05 | 2012-08-05 | 23 | 8h |
| 25 | 1.6.3 | Remove "Beta" tags from packages and configs | 2012-08-05 | 2012-08-05 | 23 | 8h |
| 26 | 1.6.4 | set up Update project | 2012-08-05 | 2012-08-05 | 23 | 8h |
| 27 | 1.6.5 | notify maintenance & security about new branch | 2012-08-06 | 2012-08-06 | 26 | 8h |

Notes:
- 1: Tasks that need to be done for Alpha, Beta and RC releases that affect the Gold Master Release
- 2: Compile a list of features for the new release. E.g by querying fate
- 3: define test cases for QA
- 4: Tasks related with the 12.2 manuals. The Documentation Team coordinate them.
- 5: Relevant new features shipped with the Release need to be added to the Manuals.
- 6: review manual and check which parts need to be removed or rewritten
- 7: integrate changes into the manual
- 8: checkpoint for doc team being ready
- 9: Tasks related with translations. A coordinator needs to be defined here. / http://i18n.opensuse.org/stats
- 10: translate openSUSE manuals to major languages
- 11: translate rpm package descriptions and summaries for at least the main languages
- 12: translate the packaged application itself and the .desktop file
- 13: translate the release notes into the main languages
- 14: checkpoint for all translations being ready
- 15: Task related with security. It is desired to include them in the release process.
- 16: the security team audits all new binaries that have the setuid bit set to find potential security issues before the release
- 17: the security team audits new network services to find potential security issues before the release
- 18: the security team audits all new D-Bus services to find potential security issues before the release
- 19: the security team audits services that install new policykit privileges to find potential security issues before the release
- 20: apparmor profiles need to be checked and potentially be updated to make sure they are still match the packages
- 21: checkpoint for security team bein ready
- 22: create a stable branch so development in Factory can continue
- 23: branch openSUSE:XX.Y from openSUSE:Factory
- 24: package release numbers in Factory need to be higher than in the released product so people who follow development can easily upgrade / Should happen automatically by build service call for branch
- 25: Use final release string in /etc/issue and remove beta.txt from install media.
- 26: openSUSE:XX.Y:Update, use previous distro as template
- 27: the Maintenance and Security teams need to know that a new distribution is about to receive online updates

| ID | WBS | Task | Start | Finish | Predecessors | Work |
| --- | --- | --- | --- | --- | --- | --- |
| 28 | 1.7 | **Bug fixing** | 2012-08-04 | 2012-08-07 |  | 40h |
| 29 | 1.7.1 | fix bug | 2012-08-04 | 2012-08-04 |  | 8h |
| 30 | 1.7.2 | submit package | 2012-08-05 | 2012-08-05 | 29 | 8h |
| 31 | 1.7.3 | review package | 2012-08-06 | 2012-08-06 | 30 | 8h |
| 32 | 1.7.4 | check in to distribution | 2012-08-07 | 2012-08-07 | 31 | 8h |
| 33 | 1.7.5 | update most annoying bugs list | 2012-08-04 | 2012-08-04 |  | 8h |
| 34 | 1.8 | update rsync modules used by the mirrors | 2012-08-04 | 2012-08-04 |  | 8h |
| 35 | 1.9 | Go from Legal team | 2012-08-04 | 2012-08-04 |  | 8h |
| 36 | 1.10 | Go/Nogo for declaring RC? | 2012-08-09 | 2012-08-09 | 33, 32, 35, 8, 21, 9, 28, 25, 3, 34, 2 | 8h |
| 37 | 1.11 | **Artwork** | 2012-08-04 | 2012-08-06 |  | 112h |
| 38 | 1.11.1 | run competition for best artwork | 2012-08-04 | 2012-08-04 |  | 8h |
| 39 | 1.11.2 | Basic design | 2012-08-05 | 2012-08-05 | 38 | 8h |
| 40 | 1.11.3 | bootsplash | 2012-08-06 | 2012-08-06 | 39 | 8h |
| 41 | 1.11.4 | desktop splash screens | 2012-08-06 | 2012-08-06 | 39 | 8h |
| 42 | 1.11.5 | wallpapers | 2012-08-06 | 2012-08-06 | 39 | 8h |
| 43 | 1.11.6 | Poster | 2012-08-06 | 2012-08-06 | 39 | 8h |
| 44 | 1.11.7 | Sticker | 2012-08-06 | 2012-08-06 | 39 | 8h |
| 45 | 1.11.8 | Flyers | 2012-08-06 | 2012-08-06 | 39 | 8h |
| 46 | 1.11.9 | T-Shirts | 2012-08-06 | 2012-08-06 | 39 | 8h |
| 47 | 1.11.10 | download banner | 2012-08-06 | 2012-08-06 | 39 | 8h |
| 48 | 1.11.11 | Countdown | 2012-08-06 | 2012-08-06 | 39 | 8h |
| 49 | 1.11.12 | Promo DVD Sleeve | 2012-08-06 | 2012-08-06 | 39 | 8h |
| 50 | 1.11.13 | Presentation | 2012-08-06 | 2012-08-06 | 39, 2 | 8h |
| 51 | 1.11.14 | Screenshots | 2012-08-04 | 2012-08-04 |  | 8h |

Notes:
- 28: This is a continuos task done by the Release Team, openSUSE Team, packagers and others. Added here to reflect the final process
- 29: the packager fixes bug in his package(s)
- 30: the packager submits the package for inclusion in the distribution
- 31: the opensuse review team reviews each package to decide whether or not to accept them
- 32: the opensuse release team checks the package into the appropriate distribution
- 33: Add bugs that affect lots of users to the list of most annoying bugs: / http://en.opensuse.org/openSUSE:Most_annoying_bugs
- 34: adjust rsync modules for full-, 160GB- and 80GB-mirrors to make sure the most requested files have a sufficient amount of mirrors
- 35: legal team finished review and declares all issues being solved
- 36: When all teams give their ok which means the current build is in good shape the build can be declared as Release Candidate (RC)
- 37: http://gitorious.org/opensuse/art/trees/master
- 38: competition and voting for design of next release
- 39: create a common theme as basis
- 40: splash screen for plymouth used during boot
- 41: splash screen when starting up KDE, GNOME etc
- 42: wallpapers used on the desktop background
- 43: Promotion poster
- 44: Promotion stickers
- 45: Design and production of promotion flyers
- 46: Design and production of promotion T-Shirts / (not for each release)
- 47: download banner for www.opensuse.org
- 48: The countdown until release date on opensuse.org
- 49: http://gitorious.org/opensuse/art/trees/master/CD-sleeve / sleeve and the ring on the cd
- 50: Create slides about the most important features of the new release for being used in presentations on OS events.
- 51: Create screen shots of the installation and highlights of the distribution / Must be creative commons license so the press can use them

| ID | WBS | Task | Start | Finish | Predecessors | Work |
| --- | --- | --- | --- | --- | --- | --- |
| 52 | 2 | **Gold Master development** | 2012-08-11 | 2012-08-21 | 175 | 240h |
| 53 | 2.1 | Call for Release Parties | 2012-08-11 | 2012-08-11 | 175 | 8h |
| 54 | 2.2 | Update Release notes | 2012-08-14 | 2012-08-14 | 66 | 8h |
| 55 | 2.3 | Install Countdown link | 2012-08-11 | 2012-08-11 | 48 | 8h |
| 56 | 2.4 | **Pre-release articles** | 2012-08-15 | 2012-08-16 | 37 | 16h |
| 57 | 2.4.1 | Create pre-release articles | 2012-08-15 | 2012-08-15 | 50, 54, 51 | 8h |
| 58 | 2.4.2 | Publish pre-release articles | 2012-08-16 | 2012-08-16 | 57 | 8h |
| 59 | 2.5 | Purchase Order for Promo DVDs | 2012-08-11 | 2012-08-11 | 49 | 8h |
| 60 | 2.6 | **monitor bug reports** | 2012-08-11 | 2012-08-14 |  | 24h |
| 61 | 2.6.1 | flag release critical bugs | 2012-08-11 | 2012-08-11 | 173 | 8h |
| 62 | 2.6.2 | remind people to fix critical bugs | 2012-08-12 | 2012-08-12 | 61 | 8h |
| 63 | 2.6.3 | Update the most annoying bugs list | 2012-08-14 | 2012-08-14 | 62, 66 | 8h |
| 64 | 2.7 | **Checks and tests** | 2012-08-11 | 2012-08-17 |  | 72h |
| 65 | 2.7.1 | verify iso sizes fit media | 2012-08-15 | 2012-08-15 | 63 | 8h |
| 66 | 2.7.2 | check that all release critical bugs are fixed | 2012-08-13 | 2012-08-13 | 62 | 8h |
| 67 | 2.7.3 | check release notes are usable | 2012-08-15 | 2012-08-15 | 54 | 8h |
| 68 | 2.7.4 | ensure all packages build | 2012-08-11 | 2012-08-11 |  | 8h |
| 69 | 2.7.5 | check manuals contain all changes | 2012-08-11 | 2012-08-11 |  | 8h |
| 70 | 2.7.6 | Verify QA testplan is succeeded | 2012-08-11 | 2012-08-11 |  | 8h |
| 71 | 2.7.7 | performance regression tests | 2012-08-11 | 2012-08-11 |  | 8h |
| 72 | 2.7.8 | check distro upgrade works | 2012-08-16 | 2012-08-16 | 65 | 8h |
| 73 | 2.7.9 | test live CDs | 2012-08-17 | 2012-08-17 | 72, 68, 65 | 8h |
| 74 | 2.8 | **Legal** | 2012-08-11 | 2012-08-13 |  | 32h |
| 75 | 2.8.1 | package list | 2012-08-11 | 2012-08-11 |  | 8h |
| 76 | 2.8.2 | proprietary components | 2012-08-11 | 2012-08-11 |  | 8h |
| 77 | 2.8.3 | IPRQ document | 2012-08-12 | 2012-08-12 | 76, 75 | 8h |
| 78 | 2.8.4 | go from Legal | 2012-08-13 | 2012-08-13 | 77 | 8h |

Notes:
- 52: Milestone that covers from the RC2 Release to the Go/NoGo decision for the final Release
- 53: http://en.opensuse.org/openSUSE:Launch_parties / http://en.opensuse.org/openSUSE:Launch_party_HOWTO / http://news.opensuse.org/2011/11/15/join-or-organize-opensuse-12-1-launch-parties
- 54: update release notes with issues found during development
- 55: put a link to the countdown on Frontpages of all wikis, forum and www.opensuse.org
- 56: Publishing articles describing the ongoing work on the Release by the openSUSE / Team at SUSE.
- 57: This articles cover the major features we are presenting in the Release. These articles can be done by the openSUSE Team and the community
- 59: Select Fab / Decide how many DVDs to produce in which country and which Fab is going to do it.
- 60: ongoing bugzilla work
- 61: set ship_stopper flag on bugs that need to be resolved before release
- 62: Remind the developers or packagers about the deadlines for submittting the fixes to include them on the final release.
- 63: http://en.opensuse.org/openSUSE:Most_annoying_bugs Informative page about the most common problems they can find in the Release because they are not fixed by us, upstream, hardware manufactures.....
- 64: Verifications tasks to check the needed work is done. Approval requested by the Release Manager to the different coordinators
- 65: make sure iso images are not too big to fit on the medium. Note that pressed CDs may not be as large as burned ones!
- 71: make sure the kernel, networking and the most important services are not slower than before
- 72: verify release numbers of all packages are higher than in the previous release
- 73: openSUSE:XX.Y:Live / not done yet by openQA so needs to be done manually
- 74: Legal requirements for products hosted by SUSE
- 75: compile a list of all packages in the distribution with the version and license
- 76: compile a list of all proprietary components with their EULAs
- 77: Document needed for each Product released by SUSE, get it from the attorneys, fill in and send it back
- 78: Legal department gives its approval to the Release

| ID | WBS | Task | Duration | Start | Finish | Predecessors | Complete | Work |
| --- | --- | --- | --- | --- | --- | --- | --- | --- |
| 79 | 2.9 | **Add-On DVD for box vendor** |  | 2012-08-11 | 2012-08-20 |  |  | 40h |
| 80 | 2.9.1 | create package lists |  | 2012-08-11 | 2012-08-11 |  |  | 8h |
| 81 | 2.9.2 | integrate live images for KDE and GNOME |  | 2012-08-18 | 2012-08-18 | 73 |  | 8h |
| 82 | 2.9.3 | add extra content needed by manufacturer |  | 2012-08-11 | 2012-08-11 |  |  | 8h |
| 83 | 2.9.4 | create custom boot menu |  | 2012-08-19 | 2012-08-19 | 81, 82 |  | 8h |
| 84 | 2.9.5 | test the DVD |  | 2012-08-20 | 2012-08-20 | 80, 83 |  | 8h |
| 85 | 2.10 | Review upgrade portal page |  | 2012-08-16 | 2012-08-16 | 67 |  | 8h |
| 86 | 2.11 | verify delta rpms work |  | 2012-08-11 | 2012-08-11 |  |  | 8h |
| 87 | 2.12 | Declare build as GMC |  | 2012-08-21 | 2012-08-21 | 78, 64, 59, 58, 55, 84, 73, 85, 86, 79, 170 |  | 8h |
| 88 | 3 | **Go/no Go meeting** |  | 2012-08-22 | 2012-08-22 | 52 |  | 8h |
| 89 | 3.1 | Go decision |  | 2012-08-22 | 2012-08-22 | 87 |  | 8h |
| 90 | 4 | **Release process** |  | 2012-08-24 | 2012-09-07 | 176 |  | 480h |
| 91 | 4.1 | Sneak Peeks |  | 2012-08-24 | 2012-08-24 | 175 |  | 8h |
| 92 | 4.2 | www.opensuse.org text snippet |  | 2012-08-24 | 2012-08-24 | 47 |  | 8h |
| 93 | 4.3 | **Iso images** |  | 2012-08-24 | 2012-08-25 |  |  | 16h |
| 94 | 4.3.1 | create delta isos |  | 2012-08-24 | 2012-08-24 |  |  | 8h |
| 95 | 4.3.2 | sign the iso images |  | 2012-08-25 | 2012-08-25 | 94 |  | 8h |
| 96 | 4.4 | **Bitorrent** |  | 2012-08-24 | 2012-08-24 |  |  | 16h |
| 97 | 4.4.1 | find external seeders |  | 2012-08-24 | 2012-08-24 |  |  | 8h |
| 98 | 4.4.2 | create torrent meta data |  | 2012-08-24 | 2012-08-24 |  |  | 8h |
| 99 | 4.5 | prepare release on internal staging server |  | 2012-08-26 | 2012-08-26 | 98, 95 |  | 8h |
| 100 | 4.6 | update mirrors.opensuse.org |  | 2012-08-24 | 2012-08-24 |  |  | 8h |
| 101 | 4.7 | **update the staging area for the mirrors** |  | 2012-08-27 | 2012-08-28 | 100, 99 |  | 16h |
| 102 | 4.7.1 | update meta links |  | 2012-08-27 | 2012-08-27 |  | 25% | 8h |
| 103 | 4.7.2 | inform mirror admins about upcoming release |  | 2012-08-28 | 2012-08-28 | 102 |  | 8h |
| 104 | 4.8 | use mirrorbrain to check for broken mirrors |  | 2012-08-29 | 2012-08-29 | 103, 101 |  | 8h |
| 105 | 4.9 | Product highlights page |  | 2012-08-24 | 2012-08-24 | 51 |  | 8h |
| 106 | 4.10 | Translate opensuse.org front page |  | 2012-08-24 | 2012-08-24 |  |  | 8h |
| 107 | 4.11 | virtual PR package |  | 2012-08-24 | 2012-08-24 |  |  | 8h |
| 108 | 4.12 | Videocasts |  | 2012-08-24 | 2012-08-24 |  |  | 8h |
| 109 | 4.13 | press kit |  | 2012-08-25 | 2012-08-25 | 105 |  | 8h |
| 110 | 4.14 | pre-information for press and ambassadors |  | 2012-08-26 | 2012-08-26 | 109 |  | 8h |
| 111 | 4.15 | reminder for press and ambassadors |  | 2012-08-27 | 2012-08-27 | 110 |  | 8h |
| 112 | 4.16 | Upload GM image for external print (Fab) |  | 2012-08-24 | 2012-08-24 | 49, 89 |  | 8h |
| 113 | 4.17 | Promo DVD production | 10d | 2012-08-25 | 2012-09-03 | 112 |  |  |
| 114 | 4.18 | Send PR package |  | 2012-09-04 | 2012-09-04 | 45, 44, 43, 113 |  | 8h |

Notes:
- 79: there's still a boxed version in germany that wants to also ship some non-oss components. done by opensource press / the 2nd DVD is actually both an addon for openSUSE as well as a bootable live medium itself which makes things a bit more complicated
- 80: work out package list together with vendor
- 81: DVD can boot live images so they need to be included
- 82: opensource press wants to add some extra content added by them
- 83: custom boot menu config is needed
- 84: the new DVD needs to be tested
- 85: Review and Verify our upgrade portal page at http://en.opensuse.org/Upgrade
- 86: make sure maintenance update repo generates proper delta rpms and zypper applies them
- 87: The Release Manager get approval from the different coordinators and declare the final build as Gold Master Candidate
- 88: Management meeting.
- 89: Management meeting including the Release Manager and the different managers involved in the Release process to confirm the Release, modify the final date or reject the Gold Master Candidate
- 90: things done the days and hours between GM and GA
- 91: Daily blog posts about selected features of the new release to create expectations. Blog posts about the release features:
- 92: there's a small paragraph on www.opensuse.org that refers to download, highlighs etc.
- 93: manual work done by the autobuild team to prepare the iso images
- 94: deltas are needed to reduce the download size for those that have the previous build already
- 95: add detached gpg signature of opensuse key
- 96: set up bittorrent infrastructure to be ready for taking the load at release time
- 97: ask mirror admins whether they could seed the torrent
- 98: create tracker files and register them with the tracker
- 100: add the new release to the index page / set "markers" for the new release
- 102: meta link files for aria2
- 103: tell them about the new isos and the proposed release date / => mirror@opensuse.org
- 104: make sure permissions on mirrors are correct
- 105: http://en.opensuse.org/openSUSE:Product_highlights_writing, http://en.opensuse.org/Product_highlights ask teams of important components to provide some text. Use release feature page as a base for this wiki page.
- 106: ask translatin list to do that
- 107: Create virtual PR package (promo package) for ambassadors to promote new release. Upload or link files to Posters, flyers etc in wiki.
- 108: make some nice video cast, e.g. from the installation. maybe use openQA
- 109: promotional materials for the press / http://en.opensuse.org/openSUSE:Press_kit
- 110: download link, presentation, link to distribution page
- 111: download link, presentation, link to distribution page
- 112: promo DVD image needs to be uploaded to Fab so they can start production
- 114: Items: / * Poster DIN A1 / * Poster(s) DIN A3 / * Flyer C6 (openSUSE Flyer) / * Bookmarks / * DVDs / * Sticker

| ID | WBS | Task | Type | Duration | Start | Finish | Predecessors | Work |
| --- | --- | --- | --- | --- | --- | --- | --- | --- |
| 115 | 4.19 | **update web sites** |  |  | 2012-08-24 | 2012-08-30 |  | 112h |
| 116 | 4.19.1 | **wiki** |  |  | 2012-08-24 | 2012-08-30 |  | 64h |
| 117 | 4.19.1.1 | front pages of all languages |  |  | 2012-08-25 | 2012-08-25 | 118, 108, 106 | 8h |
| 118 | 4.19.1.2 | Move Wiki articles to archive |  |  | 2012-08-24 | 2012-08-24 |  | 8h |
| 119 | 4.19.1.3 | http://en.opensuse.org/Welcome_to_openSUSE.org |  |  | 2012-08-26 | 2012-08-26 | 117 | 8h |
| 120 | 4.19.1.4 | http://en.opensuse.org/Development_Version |  |  | 2012-08-27 | 2012-08-27 | 119 | 8h |
| 121 | 4.19.1.5 | http://en.opensuse.org/Bugs:Most_Annoying_Bugs |  |  | 2012-08-28 | 2012-08-28 | 120 | 8h |
| 122 | 4.19.1.6 | http://en.opensuse.org/Template:ReleasesTable |  |  | 2012-08-29 | 2012-08-29 | 121 | 8h |
| 123 | 4.19.1.7 | http://en.opensuse.org/Roadmap |  |  | 2012-08-30 | 2012-08-30 | 122 | 8h |
| 124 | 4.19.1.8 | http://de.opensuse.org/OpenSUSE_kaufen |  |  | 2012-08-24 | 2012-08-24 |  | 8h |
| 125 | 4.19.2 | forum |  |  | 2012-08-24 | 2012-08-24 |  | 8h |
| 126 | 4.19.3 | www.opensuse.org |  |  | 2012-08-25 | 2012-08-25 | 92 | 8h |
| 127 | 4.19.4 | static.opensuse.org for screenshots |  |  | 2012-08-24 | 2012-08-24 |  | 8h |
| 128 | 4.19.5 | opensuse-community.org |  |  | 2012-08-24 | 2012-08-24 |  | 8h |
| 129 | 4.19.6 | opensuse-education.org |  |  | 2012-08-24 | 2012-08-24 |  | 8h |
| 130 | 4.19.7 | planet.opensuse.org |  |  | 2012-08-24 | 2012-08-24 |  | 8h |
| 131 | 4.20 | enable component "Final" in Bugzilla |  |  | 2012-08-24 | 2012-08-24 |  | 8h |
| 132 | 4.21 | update doc.opensuse.org |  |  | 2012-08-24 | 2012-08-24 |  | 8h |
| 133 | 4.22 | Checkpoint: wiki/webs updated, mirrors ready | milestone | 0d | 2012-08-30 | 2012-08-30 | 137, 132, 123, 131 |  |
| 134 | 4.23 | XXX: clarify: download redirector |  |  | 2012-08-27 | 2012-08-27 | 99 | 8h |
| 135 | 4.24 | SUSE press release |  |  | 2012-08-28 | 2012-08-28 | 105, 151 | 8h |
| 136 | 4.25 | Press interviews |  |  | 2012-08-29 | 2012-08-29 | 135 | 8h |
| 137 | 4.26 | Presentation |  |  | 2012-08-24 | 2012-08-24 | 37 | 8h |
| 138 | 4.27 | make files readable on internal staging server |  |  | 2012-08-31 | 2012-08-31 | 153, 104, 133 | 8h |
| 139 | 4.28 | publish files on pontifex.o.o and rsync.o.o |  |  | 2012-09-01 | 2012-09-01 | 138 | 8h |
| 140 | 4.29 | rescan mirrors |  |  | 2012-09-02 | 2012-09-02 | 139 | 8h |
| 141 | 4.30 | wait for mirrors to fill up |  |  | 2012-09-03 | 2012-09-03 | 140 | 8h |
| 142 | 4.31 | update software.opensuse.org download pages |  |  | 2012-08-24 | 2012-08-24 |  | 8h |
| 143 | 4.32 | deploy software.opensuse.org |  |  | 2012-09-04 | 2012-09-04 | 141, 142 | 8h |
| 144 | 4.33 | create is_maintained data |  |  | 2012-08-24 | 2012-08-24 |  | 8h |

Notes:
- 115: several web pages need to be updated to refer to the new release
- 116: openSUSE wiki pages that need to be updated. They are not properly linked until the Release date.
- 118: Move old distribution to Archive, update pages for new release / needs help from the wiki admin
- 125: Update the forum to receive questions about the release.
- 131: Bugzilla has to have a component "Final" so people can report bugs they find
- 132: Upload documentation to doc.opensuse.org
- 133: wiki needs to be updated before the announcement otherwise the server load will not allow editing it anymore
- 134: Open up infrastructure so download redirector handles all files
- 135: official announcemnt by the company about openSUSE
- 136: The Release Manager (coolo) and the openSUSE Project Manager (AJ) will be available for the press
- 137: Creation of presentation for anyone to use / https://github.com/openSUSE/artwork/tree/master/slides
- 138: This is basically the technical release time
- 139: making files available on external staging servers
- 140: tell mirrorbrain to rescan mirrors
- 141: 15-20 mirrors should have picked up the new release before announcing the release
- 142: git@gitorious.org:opensuse/software-o-o.git / app/controllers/main_controller.rb
- 143: changes were only made in git so far so the git repo needs to be deployed to the server to make the new content visible
- 144: internal data used mainly by security to determine which packages are in which release

| ID | WBS | Task | Start | Finish | Predecessors | Work |
| --- | --- | --- | --- | --- | --- | --- |
| 145 | 4.34 | **make sure 3rd party repos are prepared** | 2012-08-24 | 2012-08-24 |  | 24h |
| 146 | 4.34.1 | Nvidia | 2012-08-24 | 2012-08-24 |  | 8h |
| 147 | 4.34.2 | ATI | 2012-08-24 | 2012-08-24 |  | 8h |
| 148 | 4.34.3 | Packman | 2012-08-24 | 2012-08-24 |  | 8h |
| 149 | 4.35 | Create Google alerts for openSUSE 12.2 | 2012-08-24 | 2012-08-24 |  | 8h |
| 150 | 4.36 | **Release announcement** | 2012-08-27 | 2012-09-05 | 105 | 40h |
| 151 | 4.36.1 | Write release announcement | 2012-08-27 | 2012-08-27 | 110, 105, 137, 132 | 8h |
| 152 | 4.36.2 | Translate release announcement | 2012-08-28 | 2012-08-28 | 91, 151 | 8h |
| 153 | 4.36.3 | check the announcement | 2012-08-29 | 2012-08-29 | 145, 152 | 8h |
| 154 | 4.36.4 | Create correct links to webpages and wikies | 2012-08-31 | 2012-08-31 | 142, 136FS+24h, 149, 107, 108, 106, 153 | 8h |
| 155 | 4.36.5 | Publish release announcement | 2012-09-05 | 2012-09-05 | 141, 143, 154 | 8h |
| 156 | 4.37 | **Release monitoring** | 2012-09-06 | 2012-09-07 | 150 | 32h |
| 157 | 4.37.1 | promote launch on social media | 2012-09-06 | 2012-09-06 | 155 | 8h |
| 158 | 4.37.2 | repeatedly scan for new mirrors | 2012-09-06 | 2012-09-06 | 155 | 8h |
| 159 | 4.37.3 | watch bandwidth usage | 2012-09-07 | 2012-09-07 | 158 | 8h |
| 160 | 4.37.4 | Monitoring real time impact | 2012-09-06 | 2012-09-06 | 155 | 8h |
| 161 | 5 | **Evaluation** | 2012-09-09 | 2012-09-12 | 177 | 56h |
| 162 | 5.1 | collect press mentions | 2012-09-09 | 2012-09-09 | 160, 177, 149 | 8h |
| 163 | 5.2 | Collect stats about release | 2012-09-09 | 2012-09-09 | 177 | 8h |
| 164 | 5.3 | Create and publish conclusion article | 2012-09-10 | 2012-09-10 | 163, 162 | 8h |
| 165 | 5.4 | **Create next product in Bugzilla** | 2012-09-09 | 2012-09-12 |  | 32h |
| 166 | 5.4.1 | File Bug report for NPP | 2012-09-09 | 2012-09-09 |  | 8h |
| 167 | 5.4.2 | Initialize product data (categories) | 2012-09-10 | 2012-09-10 | 166 | 8h |
| 168 | 5.4.3 | request product to be made public | 2012-09-11 | 2012-09-11 | 167 | 8h |
| 169 | 5.4.4 | setup milestones | 2012-09-12 | 2012-09-12 | 168 | 8h |

Notes:
- 145: make sure 3rd party repos are ready for the new release
- 146: nvidia needs to publish their binary only drivers
- 147: ati needs to publish their binary only drivers
- 148: packman needs to make their repos build for the new release
- 149: get notification from google about activity wrt openSUSE
- 150: group of tasks that need to be done for the release announcement
- 151: some nice text based on product highlights page
- 152: We write the Announcement in English and community members translate it. We include those in the wiki and link them in the Release announcement before publishing
- 153: Revision by the content/marketing coordinator. Communicate the ok to Release Manager.
- 154: The Release Manager approves this task. Needs to be coordinated with infrastructure, infrastructure needs to be open before publishing
- 155: The Release Manager gives ok for publishing the announcement
- 156: Task to be done the Release date after the announcement is out
- 157: facebook, twitter, google+ This task needs coordination with community
- 158: Task done by service team during Release day for several hours
- 159: Task done by service team on Release date
- 160: openSUSE Team, Release Team and community memebrss involved answer questions, are available in openSUSE Channels, etc.
- 161: post-release work
- 162: add links to articles by the press to http://en.opensuse.org/In_the_press
- 163: compile download statistics from web server logs
- 164: Article with mentions and summary of impact of 12.2 release, with quotes from media
- 165: Create the next version of openSUSE as product in bugzilla so people can start filing bugs
- 166: new products need to be requested by filing a bug report
- 167: copy data from previous product to new one
- 168: Bugzilla products are not public by default so that needs to be requested manually
- 169: e.g. when milestone 1 is released, add milestone 2

| ID | WBS | Task | Start | Finish | Predecessors | Work |
| --- | --- | --- | --- | --- | --- | --- |
| 170 | 6 | **continuous openQA work** | 2012-08-04 | 2012-08-06 |  | 24h |
| 171 | 6.1 | update openQA testcases | 2012-08-04 | 2012-08-04 |  | 8h |
| 172 | 6.2 | debug issues found by openQA | 2012-08-05 | 2012-08-05 | 171 | 8h |
| 173 | 6.3 | file bugs for openQA issues | 2012-08-06 | 2012-08-06 | 172 | 8h |
| 174 | 7 | **Release process Roadmap check** | 2012-08-10 | 2012-09-08 |  | 24h |
| 175 | 7.1 | Define and publish Gold Master roadmap | 2012-08-10 | 2012-08-10 | 1, 36 | 8h |
| 176 | 7.2 | Define and publish Release schedule | 2012-08-23 | 2012-08-23 | 88 | 8h |
| 177 | 7.3 | Define Evaluation process roadmap | 2012-09-08 | 2012-09-08 | 160, 159, 157, 90 | 8h |

Notes:
- 170: http://openqa.opensuse.org
- 171: changes in the installation workflow might require adjusting the scripts used by openQA
- 172: try to reproduce openQA failures locally to find the cause
- 173: file bug report with the details found during debugging
- 174: http://en.opensuse.org/openSUSE:Roadmap
- 175: define which tasks need to be done and when during RC phase
- 176: define what needs to be done at the day of the release
- 177: define which tasks need to be done after the release
